# Harbour Pointe Assisted Living Ctr - Baseline Plan

Schedule from Primavera P6, 2010-09-01 to 2014-08-14, data date 2010-07-01, costs in USD.
ï»¿

## Calendars

- Trades - 5 Day Workweek: Mon-Fri 08:00-12:00, 13:00-17:00; Sat-Sun off. Exceptions (off unless hours are given): 2010-09-06, 2010-11-25, 2010-12-24, 2010-12-31, 2011-05-30, 2011-07-04, 2011-09-05, 2011-11-24, 2011-12-26, 2012-01-02, 2012-05-28, 2012-07-04, 2012-09-03, 2012-11-22, 2012-12-25, 2013-01-01, 2013-05-27, 2013-07-04, 2013-09-02, 2013-11-28, 2013-12-25.

## Resources

| Resource | Group | Rate | Notes |
| --- | --- | --- | --- |
| Thermal Protection Subcontractor | labor | 120 | ï»¿ |
| Painter | labor | 70 | ï»¿ |
| Finishes & Fit-out Subcontractor | labor | 55 |  |
| Floor and Carpet Layer | labor | 45 | ï»¿ |
| Plumber | labor | 55 | ï»¿ |
| Electrician | labor | 95 | ï»¿ |
| HVAC | labor | 44 | ï»¿ |
| FF&E Specialties | labor | 54 | ï»¿ |
| Drywall Subcontractor | labor | 45 |  |
| Conveying Subcontractor | labor | 80 | ï»¿ |
| Rough Carpenter | labor | 45 | ï»¿ |
| Finish Carpenter | labor | 67 | ï»¿ |
| Millwork Subcontractor | labor | 70 | ï»¿ |
| Pool Installation Subcontractor | labor | 105 | ï»¿ |
| Concrete Foundation Subcontractor | labor | 100 | ï»¿ |
| Laborer-Construction | labor | 35 | ï»¿ |
| Roofing Subcontractor | labor | 75 | ï»¿ |
| Specialty Metal Fabricator Subcontractor | labor | 110 | ï»¿ |
| Project Managers | labor | 50 | ï»¿ |
| Fire Suppression Subcontractor | labor | 85 | ï»¿ |
| Landscaping Subcontractor | labor | 40 | ï»¿ |
| Glass & Glazing Subcontractor | labor | 87 | ï»¿ |
| Utilities Subcontractor | labor | 105 | ï»¿ |
| Paving & Roadways Subcontractor | labor | 130 | ï»¿ |

## Schedule

| ID | WBS | Activity | Type | Duration | Start | Finish | Predecessors | Total float | Free float | Resources | Cost | Key Milestones |
| --- | --- | --- | --- | --- | --- | --- | --- | --- | --- | --- | --- | --- |
| EC1010 |  | Building Pad Delivered by Owner | milestone | 0d | 2010-09-01 | 2010-09-01 |  | 845d | 348d |  |  | Key MS |
| EC1080 |  | Permits Received - Start Site Work | WBS summary | 1032d | 2010-09-01 | 2014-08-14 | EC1010 FS+1d | 0d |  |  |  | Key MS |
| EC2430 |  | Substantial Completion - All TCO | milestone | 0d | 2014-08-14 | 2014-08-14 | EC1600, EC1200, EC2440, EC1130, EC2180, EC1270, EC2390, EC2420 | 0d |  |  |  | Key MS |
|  | 1 | **Building 1** |  |  | 2010-09-01 | 2014-08-14 |  |  |  |  |  |  |
| EC2440 |  | Complete Building 1 | milestone | 0d | 2014-08-14 | 2014-08-14 | EC2240, EC1790, EC1850, EC2360, EC1630, EC1780, EC2290, EC1670, EC1700, EC2270, EC2400, EC2140, EC1910, EC2080, EC2250 FF, EC1990, EC2370, EC1550, EC1950, EC2260 | 0d |  |  |  | Key MS |
|  | 1 | **Structure** |  |  | 2010-09-01 | 2011-08-31 |  |  |  |  |  |  |
| EC1090 |  | Building Pad Including UG Utils |  | 60d | 2010-09-01 | 2010-11-23 | EC1110 FF, EC1080 | 0d |  | Concrete Foundation Subcontractor [480 h] | 48,000 |  |
| EC1140 |  | First Floor Masonry Structure |  | 15d | 2010-11-24 | 2010-12-14 | EC1090 | 0d |  | Laborer-Construction [120 h] | 4,200 |  |
| EC1170 |  | Second Floor Slab & Collar Beam |  | 30d | 2010-12-15 | 2011-01-25 | EC1140 | 0d |  | Laborer-Construction [240 h] | 8,400 |  |
| EC1190 |  | Second Floor Masonry Structure |  | 15d | 2011-01-26 | 2011-02-15 | EC1170 | 0d |  | Laborer-Construction [120 h] | 4,200 |  |
| EC1210 |  | Third Floor Slab & Collar Beam |  | 30d | 2011-02-16 | 2011-03-29 | EC1190 | 0d |  | Laborer-Construction [240 h] | 8,400 |  |
| EC1240 |  | Third Floor Masonry Structure |  | 15d | 2011-03-30 | 2011-04-19 | EC1210 | 0d |  | Laborer-Construction [120 h] | 4,200 |  |
| EC1250 |  | Fourth Floor Slab & Collar Beam |  | 30d | 2011-04-20 | 2011-05-31 | EC1240 | 0d |  | Laborer-Construction [240 h] | 8,400 |  |
| EC1300 |  | Fourth Floor Masonry Structure |  | 15d | 2011-06-01 | 2011-06-21 | EC1250 | 0d |  | Laborer-Construction [120 h] | 4,200 |  |
| EC1310 |  | Roof Slab |  | 30d | 2011-06-22 | 2011-08-02 | EC1300 | 0d |  | Laborer-Construction [240 h] | 8,400 |  |
| EC1340 |  | Stair and Elevator Masonry Structure |  | 6d | 2011-08-03 | 2011-08-10 | EC1310 | 0d |  | Laborer-Construction [48 h] | 1,680 |  |
| EC1350 |  | Roof Slab/Collar Beam |  | 15d | 2011-08-11 | 2011-08-31 | EC1340 | 0d |  | Laborer-Construction [120 h] | 4,200 |  |
|  | 2 | **Roof** |  |  | 2011-09-01 | 2011-12-30 |  |  |  |  |  |  |
| EC1390 |  | Place Roof Trusses and Sheathing |  | 30d | 2011-09-01 | 2011-10-12 | EC1350 | 110d | 0d | Roofing Subcontractor [240 h]; Specialty Metal Fabricator Subcontractor [240 h] | 44,400 |  |
| EC1400 |  | Place Mechanical Equipment Supports |  | 30d | 2011-09-01 | 2011-10-12 | EC1350 | 338d | 0d | Roofing Subcontractor [240 h] | 18,000 |  |
| EC1530 |  | Built-Up Asphalt Roofing |  | 42d | 2011-10-13 | 2011-12-09 | EC1400 | 338d | 0d | Roofing Subcontractor [336 h] | 25,200 |  |
| EC1540 |  | Felt and Tile Roofing |  | 57d | 2011-10-13 | 2011-12-30 | EC1390 | 110d | 0d | Roofing Subcontractor [456 h] | 34,200 |  |
| EC1780 |  | Roof Complete | milestone | 0d | 2011-12-30 | 2011-12-30 | EC1530, EC1010, EC1540 | 497d | 0d |  |  | Key MS |
|  | 3 | **Envelope** |  |  | 2011-08-11 | 2012-07-06 |  |  |  |  |  |  |
| EC1360 |  | Mobilize Scaffolding |  | 15d | 2011-08-11 | 2011-08-31 | EC1350 SS | 44d | 20d | Thermal Protection Subcontractor [120 h] | 14,400 |  |
| EC1410 |  | Install Exterior Windows and Sliding Glass Doors Floor 1 |  | 24d | 2011-09-01 | 2011-10-04 | EC1350 | 0d |  | Thermal Protection Subcontractor [192 h] | 23,040 |  |
| EC1470 |  | Install Exterior Windows and Sliding Glass Doors Floor 2 |  | 24d | 2011-09-28 | 2011-10-31 | EC1410 FS-5d | 0d |  | Thermal Protection Subcontractor [192 h] | 23,040 |  |
| EC1490 |  | Install Backing & Cauld Windows Floor1 |  | 12d | 2011-09-29 | 2011-10-14 | EC1410 FS-4d, EC1360 | 24d | 7d | Thermal Protection Subcontractor [96 h] | 11,520 |  |
| EC1500 |  | Install Exterior Windows and Sliding Glass Doors Floor 3 |  | 21d | 2011-10-25 | 2011-11-22 | EC1470 FS-5d | 0d |  | Thermal Protection Subcontractor [168 h] | 20,160 |  |
| EC1510 |  | Install Backing & Cauld Windows Floor 2 |  | 12d | 2011-10-26 | 2011-11-10 | EC1470 FS-4d, EC1490 | 17d | 4d | Thermal Protection Subcontractor [96 h] | 11,520 |  |
| EC1520 |  | Install Exterior Windows and Sliding Glass Doors Floor 4 |  | 27d | 2011-11-16 | 2011-12-22 | EC1500 FS-5d | 0d |  | Thermal Protection Subcontractor [216 h] | 25,920 |  |
| EC1570 |  | Install Backing & Cauld Windows Floor 3 |  | 9d | 2011-11-17 | 2011-11-29 | EC1500 FS-4d, EC1510 | 13d |  | Thermal Protection Subcontractor [72 h] | 8,640 |  |
| EC1650 |  | Install Backing & Cauld Windows Floor 4 |  | 12d | 2011-12-19 | 2012-01-03 | EC1520 FS-4d, EC1570 | 0d |  | Thermal Protection Subcontractor [96 h] | 11,520 |  |
| EC1580 |  | Stucco Bands |  | 12d | 2011-12-21 | 2012-01-05 | EC1650 FS-10d, EC1510 | 0d |  | Thermal Protection Subcontractor [96 h] | 11,520 |  |
| EC1660 |  | Stucco Grey |  | 24d | 2012-01-06 | 2012-02-08 | EC1580 | 0d |  | Thermal Protection Subcontractor [192 h] | 23,040 |  |
| EC1690 |  | Stucco Finish Coat |  | 30d | 2012-02-09 | 2012-03-21 | EC1660 | 0d |  | Thermal Protection Subcontractor [240 h] | 28,800 |  |
| EC1840 |  | Caulk |  | 12d | 2012-03-22 | 2012-04-06 | EC1690 | 0d |  | Thermal Protection Subcontractor [96 h] | 11,520 |  |
| EC1900 |  | Stucco Band Trim |  | 15d | 2012-04-09 | 2012-04-27 | EC1840 | 0d |  | Thermal Protection Subcontractor [120 h] | 14,400 |  |
| EC1980 |  | Paint Exterior |  | 15d | 2012-05-07 | 2012-05-25 | EC1900 FS+5d | 0d |  | Painter [120 h] | 8,400 |  |
| EC1990 |  | Install Railings |  | 45d | 2012-05-07 | 2012-07-06 | EC1980 SS | 189d | 0d | Thermal Protection Subcontractor [360 h] | 43,200 |  |
| EC2110 |  | Demobilize Scaffolding |  | 15d | 2012-05-28 | 2012-06-15 | EC1980 | 0d |  | Thermal Protection Subcontractor [120 h] | 14,400 |  |
| EC2140 |  | Shell Complete | milestone | 0d | 2012-07-06 | 2012-07-06 | EC2110, EC1990 | 189d | 22d |  |  | Key MS |

| ID | WBS | Activity | Type | Duration | Start | Finish | Predecessors | Total float | Free float | Resources | Cost | Key Milestones |
| --- | --- | --- | --- | --- | --- | --- | --- | --- | --- | --- | --- | --- |
|  | 4 | **Interior Finishes** |  |  | 2011-10-13 | 2013-04-29 |  |  |  |  |  |  |
| EC1550 |  | Unit Finishes Building North - Floor 1 |  | 246d | 2011-10-13 | 2012-09-20 | EC1530 SS, EC1540 SS | 338d | 0d | Plumber [109.09 h]; Electrician [109.09 h]; HVAC [109.09 h]; FF&E Specialties [109.09 h]; Painter [36 h]; Drywall Subcontractor [109.09 h]; Finishes & Fit-out Subcontractor [109.09 h]; Rough Carpenter [109.09 h]; Finish Carpenter [109.09 h]; Millwork Subcontractor [109.09 h]; Floor and Carpet Layer [109.09 h] | 65,247.27 |  |
| EC1630 |  | Unit Finishes Building South - Floor 1 |  | 249d | 2011-10-20 | 2012-10-02 | EC1550 SS+5d | 338d | 0d | Finishes & Fit-out Subcontractor [109.09 h]; Rough Carpenter [109.09 h]; Finish Carpenter [109.09 h]; Millwork Subcontractor [109.09 h]; Floor and Carpet Layer [109.09 h]; Plumber [109.09 h]; Electrician [109.09 h]; HVAC [109.09 h]; FF&E Specialties [109.09 h]; Painter [36 h]; Drywall Subcontractor [109.09 h] | 65,247.27 |  |
| EC1670 |  | Unit Finishes Building North - Floor 2 |  | 249d | 2011-10-27 | 2012-10-09 | EC1630 SS+5d | 412d | 0d | Finishes & Fit-out Subcontractor [109.09 h]; Rough Carpenter [109.09 h]; Finish Carpenter [109.09 h]; Millwork Subcontractor [109.09 h]; Floor and Carpet Layer [109.09 h]; Plumber [109.09 h]; Electrician [109.09 h]; HVAC [109.09 h]; FF&E Specialties [109.09 h]; Painter [36 h]; Drywall Subcontractor [109.09 h] | 65,247.27 |  |
| EC1700 |  | Unit Finishes Building South - Floor 2 |  | 249d | 2011-11-03 | 2012-10-16 | EC1670 SS+5d | 412d | 0d | Finishes & Fit-out Subcontractor [109.09 h]; Rough Carpenter [109.09 h]; Finish Carpenter [109.09 h]; Millwork Subcontractor [109.09 h]; Floor and Carpet Layer [109.09 h]; Plumber [109.09 h]; Electrician [109.09 h]; HVAC [109.09 h]; FF&E Specialties [109.09 h]; Painter [36 h]; Drywall Subcontractor [109.09 h] | 65,247.27 |  |
| EC1790 |  | Unit Finishes Building North - Floor 3 |  | 249d | 2011-11-10 | 2012-10-23 | EC1700 SS+5d, EC1820 FF+40d | 412d | 0d | Finishes & Fit-out Subcontractor [109.09 h]; Rough Carpenter [109.09 h]; Finish Carpenter [109.09 h]; Millwork Subcontractor [109.09 h]; Floor and Carpet Layer [109.09 h]; Plumber [109.09 h]; Electrician [109.09 h]; HVAC [109.09 h]; FF&E Specialties [109.09 h]; Painter [36 h]; Drywall Subcontractor [109.09 h] | 65,247.27 |  |
| EC1850 |  | Unit Finishes Building South - Floor 3 |  | 249d | 2011-11-17 | 2012-10-30 | EC1790 SS+5d | 412d | 0d | Finishes & Fit-out Subcontractor [109.09 h]; Rough Carpenter [109.09 h]; Finish Carpenter [109.09 h]; Millwork Subcontractor [109.09 h]; Floor and Carpet Layer [109.09 h]; Plumber [109.09 h]; Electrician [109.09 h]; HVAC [109.09 h]; FF&E Specialties [109.09 h]; Painter [36 h]; Drywall Subcontractor [109.09 h] | 65,247.27 |  |
| EC1910 |  | Unit Finishes Building North - Floor 4 |  | 252d | 2011-11-24 | 2012-11-09 | EC1850 SS+5d | 412d | 0d | Finishes & Fit-out Subcontractor [109.09 h]; Rough Carpenter [109.09 h]; Finish Carpenter [109.09 h]; Millwork Subcontractor [109.09 h]; Floor and Carpet Layer [109.09 h]; Plumber [109.09 h]; Electrician [109.09 h]; HVAC [109.09 h]; FF&E Specialties [109.09 h]; Painter [36 h]; Drywall Subcontractor [109.09 h] | 65,247.27 |  |
| EC1950 |  | Unit Finishes Building South - Floor 4 |  | 252d | 2011-12-01 | 2012-11-16 | EC1910 SS+5d | 412d | 74d | Finishes & Fit-out Subcontractor [109.09 h]; Rough Carpenter [109.09 h]; Finish Carpenter [109.09 h]; Millwork Subcontractor [109.09 h]; Floor and Carpet Layer [109.09 h]; Plumber [109.09 h]; Electrician [109.09 h]; HVAC [109.09 h]; FF&E Specialties [109.09 h]; Painter [36 h]; Drywall Subcontractor [109.09 h] | 65,247.27 |  |
| EC1820 |  | Building 2 Elevators Complete |  | 87d | 2012-01-02 | 2012-05-01 | EC1440 FF+15d, EC1780, EC1550 SS | 497d | 85d | Conveying Subcontractor [480 h]; Electrician [480 h] | 84,000 |  |
| EC2240 |  | Tenant Finishes for Clubhouse Areas |  | 159d | 2012-09-19 | 2013-04-29 | EC1630 FS-10d | 338d | 0d | Finishes & Fit-out Subcontractor [300 h]; Floor and Carpet Layer [300 h]; Plumber [300 h]; Electrician [300 h]; HVAC [300 h]; FF&E Specialties [300 h]; Painter [100 h]; Drywall Subcontractor [300 h] | 124,900 |  |
| EC2370 |  | Final Inspections and Punchlist |  | 42d | 2013-03-01 | 2013-04-29 | EC2240 FF, EC1700, EC1550, EC1670, EC1790, EC1850, EC1630, EC1910, EC1950 | 338d |  | Finishes & Fit-out Subcontractor [90 h]; Floor and Carpet Layer [90 h]; Plumber [90 h]; Electrician [90 h]; HVAC [90 h]; FF&E Specialties [90 h]; Painter [30 h]; Drywall Subcontractor [90 h] | 37,470 |  |
|  | 5 | **Pool & Courtyard** |  |  | 2012-06-04 | 2013-04-05 |  |  |  |  |  |  |
| EC2080 |  | Pool & Deck |  | 177d | 2012-06-04 | 2013-02-05 | EC2110 FS-10d, EC1540 | 0d |  | Pool Installation Subcontractor [840 h] | 88,200 |  |
| EC2270 |  | Pergola and Amenities |  | 63d | 2013-01-09 | 2013-04-05 | EC2080 FS-20d | 0d |  | Pool Installation Subcontractor [504 h] | 52,920 |  |
|  | 2 | **Building 2** |  |  | 2010-09-29 | 2013-07-05 |  |  |  |  |  |  |
| EC2420 |  | Complete Building 2 | milestone | 0d | 2013-07-05 | 2013-07-05 | EC2070, EC2410, EC2150, EC2200, EC2120, EC2030, EC2210, EC2330, EC2170, EC2340 | 289d |  |  |  | Key MS |
|  | 1 | **Structure** |  |  | 2010-09-29 | 2011-10-14 |  |  |  |  |  |  |
| EC1150 |  | Building Slab Incl. UG Utils |  | 60d | 2010-09-29 | 2010-12-21 | EC1090 SS+20d, EC1080 | 167d | 0d | Concrete Foundation Subcontractor [480 h]; Project Managers [480 h] | 72,000 |  |
| EC1220 |  | First Floor Masonry Structure |  | 15d | 2010-12-22 | 2011-01-11 | EC1150 | 167d | 0d | Laborer-Construction [120 h] | 4,200 |  |
| EC1230 |  | Second Floor Slab & Collar Beam |  | 30d | 2011-01-12 | 2011-02-22 | EC1220 | 167d | 0d | Laborer-Construction [240 h] | 8,400 |  |
| EC1260 |  | Second Floor Masonry Structure |  | 15d | 2011-02-23 | 2011-03-15 | EC1230 | 167d | 0d | Laborer-Construction [120 h] | 4,200 |  |
| EC1290 |  | Third Floor Slab & Collar Beam |  | 30d | 2011-03-16 | 2011-04-26 | EC1260 | 167d | 0d | Laborer-Construction [240 h] | 8,400 |  |
| EC1320 |  | Third Floor Masonry Structure |  | 15d | 2011-04-27 | 2011-05-17 | EC1290 | 167d | 0d | Laborer-Construction [120 h] | 4,200 |  |
| EC1330 |  | Fourth Floor Slab & Collar Beam |  | 30d | 2011-05-18 | 2011-06-28 | EC1320 | 167d | 0d | Laborer-Construction [240 h] | 8,400 |  |
| EC1380 |  | Fourth Floor Masonry Structure |  | 15d | 2011-06-29 | 2011-07-19 | EC1330 | 167d | 0d | Laborer-Construction [120 h] | 4,200 |  |
| EC1480 |  | Roof Slab |  | 27d | 2011-07-20 | 2011-08-25 | EC1380 | 167d | 0d | Laborer-Construction [216 h] | 7,560 |  |
| EC1620 |  | Stair and Elevator Masonry Structure |  | 6d | 2011-08-26 | 2011-09-02 | EC1480 | 167d | 0d | Laborer-Construction [48 h] | 1,680 |  |
| EC1640 |  | Roof Slab/Collar Beam |  | 30d | 2011-09-05 | 2011-10-14 | EC1620 | 167d | 0d | Laborer-Construction [240 h] | 8,400 |  |

Notes:
- EC1550: Anticipated Problems: ï»¿
- EC1670: Steps: Install Plumbing Risers; Sprinkler Rough In; Layout and Top Rack; Electrical Rough In; Interior Rough and Finishes; HVAC Duct Rough In; HVAC Rough Inspection; Frame Walls & Soffits & Prehang; Install Plumbing In Walls; Electrical Wiring; Plumbing Rough Inspection; Electrical Rough Inspection; Framing Inspection; Install Insulation & Drywall One Side; Install Drywall 2nd Side; Finish Drywall (Bead, Tape, Knockdown Texture); Cut Plugs & Switches; Install Interior Door Frames; Interior Trim & Millwork; Paint; Install Cabinet Carcasss; Tile Kitchen, Foyer & Baths; Install Kit Plumbing Fixtures; Install Bath Mirrors & Enclosures; Install Bath Harware & Accessories; Finish Kitchen & Bath Plumbing; Paint 2nd Coat; Finish Plumbing Inspection; Install HVAC Unit & Startup; Carpet Units; Install Interior Doors; Install Security Finishes; Touch Up Drywall; Install Appliances; Touch Up Paint; Punchlist

| ID | WBS | Activity | Type | Duration | Start | Finish | Predecessors | Total float | Free float | Resources | Cost | Key Milestones |
| --- | --- | --- | --- | --- | --- | --- | --- | --- | --- | --- | --- | --- |
|  | 2 | **Roof** |  |  | 2011-10-17 | 2012-02-14 |  |  |  |  |  |  |
| EC1710 |  | Place Roof Trusses and Sheathing |  | 30d | 2011-10-17 | 2011-11-25 | EC1640 | 167d | 0d | Roofing Subcontractor [240 h]; Specialty Metal Fabricator Subcontractor [240 h] | 44,400 |  |
| EC1720 |  | Place Mechanical Equipment Supports |  | 30d | 2011-10-17 | 2011-11-25 | EC1640 | 182d | 0d | Roofing Subcontractor [240 h] | 18,000 |  |
| EC1860 |  | Built-Up Asphalt Roofing |  | 42d | 2011-11-28 | 2012-01-24 | EC1720 | 182d | 10d | Roofing Subcontractor [336 h] | 25,200 |  |
| EC1870 |  | Felt and Tile Roofing |  | 57d | 2011-11-28 | 2012-02-14 | EC1710 | 167d | 0d | Roofing Subcontractor [456 h] | 34,200 |  |
| EC2020 |  | Roof Complete | milestone | 0d | 2012-02-14 | 2012-02-14 | EC1150 SF, EC1870, EC1860 | 167d | 0d |  |  | Key MS |
|  | 3 | **Envelope** |  |  | 2011-10-17 | 2012-12-07 |  |  |  |  |  |  |
| EC1730 |  | Install Exterior Windows and Sliding Glass Doors Floor 1 |  | 30d | 2011-10-17 | 2011-11-25 | EC1640 | 325d | 0d | Thermal Protection Subcontractor [240 h]; Glass & Glazing Subcontractor [240 h] | 49,680 |  |
| EC1740 |  | Mobilize Scaffolding |  | 15d | 2011-10-17 | 2011-11-04 | EC1640 | 363d | 11d | Thermal Protection Subcontractor [120 h] | 14,400 |  |
| EC1800 |  | Install Exterior Windows and Sliding Glass Doors Floor 2 |  | 27d | 2011-11-21 | 2011-12-27 | EC1730 FS-5d | 325d | 0d | Thermal Protection Subcontractor [216 h]; Glass & Glazing Subcontractor [216 h] | 44,712 |  |
| EC1830 |  | Install Backing & Cauld Windows Floor1 |  | 15d | 2011-11-22 | 2011-12-12 | EC1740, EC1730 FS-4d | 352d | 7d | Thermal Protection Subcontractor [120 h] | 14,400 |  |
| EC1880 |  | Install Exterior Windows and Sliding Glass Doors Floor 3 |  | 27d | 2011-12-21 | 2012-01-26 | EC1800 FS-5d | 325d | 0d | Thermal Protection Subcontractor [216 h]; Glass & Glazing Subcontractor [216 h] | 44,712 |  |
| EC1890 |  | Install Backing & Cauld Windows Floor 2 |  | 12d | 2011-12-22 | 2012-01-06 | EC1800 FS-4d, EC1830 | 345d | 10d | Thermal Protection Subcontractor [96 h] | 11,520 |  |
| EC1920 |  | Install Exterior Windows and Sliding Glass Doors Floor 4 |  | 30d | 2012-01-20 | 2012-03-01 | EC1880 FS-5d | 325d | 0d | Thermal Protection Subcontractor [240 h]; Glass & Glazing Subcontractor [240 h] | 49,680 |  |
| EC1930 |  | Install Backing & Cauld Windows Floor 3 |  | 15d | 2012-01-23 | 2012-02-10 | EC1890, EC1880 FS-4d | 335d | 10d | Thermal Protection Subcontractor [120 h] | 14,400 |  |
| EC1960 |  | Install Backing & Cauld Windows Floor 4 |  | 15d | 2012-02-27 | 2012-03-16 | EC1930, EC1920 FS-4d | 325d | 0d | Thermal Protection Subcontractor [120 h] | 14,400 |  |
| EC1940 |  | Stucco Bands |  | 15d | 2012-03-05 | 2012-03-23 | EC1890, EC1960 FS-10d | 325d | 0d | Thermal Protection Subcontractor [120 h] | 14,400 |  |
| EC1970 |  | Stucco Grey |  | 30d | 2012-03-26 | 2012-05-04 | EC1940 | 325d | 0d | Thermal Protection Subcontractor [240 h] | 28,800 |  |
| EC2050 |  | Stucco Finish Coat |  | 30d | 2012-05-07 | 2012-06-15 | EC1970 | 325d | 0d | Thermal Protection Subcontractor [240 h] | 28,800 |  |
| EC2130 |  | Caulk |  | 15d | 2012-06-18 | 2012-07-06 | EC2050 | 325d | 0d | Thermal Protection Subcontractor [120 h] | 14,400 |  |
| EC2160 |  | Stucco Band Trim |  | 30d | 2012-07-09 | 2012-08-17 | EC2130 | 325d | 0d | Thermal Protection Subcontractor [240 h] | 28,800 |  |
| EC2220 |  | Paint Exterior |  | 60d | 2012-08-27 | 2012-11-16 | EC2160 FS+5d | 325d | 0d | Thermal Protection Subcontractor [480 h] | 57,600 |  |
| EC2230 |  | Install Railings |  | 45d | 2012-08-27 | 2012-10-26 | EC2220 SS | 370d | 30d | Thermal Protection Subcontractor [360 h] | 43,200 |  |
| EC2300 |  | Demobilize Scaffolding |  | 15d | 2012-11-19 | 2012-12-07 | EC2220 | 325d | 0d | Thermal Protection Subcontractor [120 h] | 14,400 |  |
| EC2320 |  | Shell Complete | milestone | 0d | 2012-12-07 | 2012-12-07 | EC2300, EC2230 | 340d | 0d |  |  | Key MS |

| ID | WBS | Activity | Type | Duration | Start | Finish | Predecessors | Total float | Free float | Constraint | Resources | Cost | Key Milestones |
| --- | --- | --- | --- | --- | --- | --- | --- | --- | --- | --- | --- | --- | --- |
|  | 4 | **Interior Finishes** |  |  | 2012-02-08 | 2013-07-05 |  |  |  |  |  |  |  |
| EC2000 |  | Unit Finishes Building North - Floor 1 |  | 252d | 2012-02-08 | 2013-01-24 | EC1860, EC1870 FS-5d | 289d | 0d |  | Finishes & Fit-out Subcontractor [120 h]; Rough Carpenter [120 h]; Finish Carpenter [120 h]; Millwork Subcontractor [120 h]; Drywall Subcontractor [120 h]; Floor and Carpet Layer [120 h]; Painter [40 h]; Plumber [120 h]; HVAC [120 h]; Electrician [120 h] | 65,320 |  |
| EC2030 |  | Unit Finishes Building South - Floor 1 |  | 252d | 2012-02-15 | 2013-01-31 | EC2000 SS+5d | 289d | 0d |  | Finishes & Fit-out Subcontractor [120 h]; Rough Carpenter [120 h]; Finish Carpenter [120 h]; Millwork Subcontractor [120 h]; Drywall Subcontractor [120 h]; Floor and Carpet Layer [120 h]; Painter [40 h]; Plumber [120 h]; HVAC [120 h]; Electrician [120 h] | 65,320 |  |
| EC2040 |  | Building 1 Elevators Complete |  | 87d | 2012-02-15 | 2012-06-14 | EC2000 SS, EC1750 FF+15d, EC2020 | 423d | 134d |  | Conveying Subcontractor [480 h]; Electrician [480 h] | 84,000 |  |
| EC2070 |  | Unit Finishes Building North - Floor 2 |  | 246d | 2012-02-22 | 2013-01-30 | EC2030 SS+5d | 289d | 0d |  | Finishes & Fit-out Subcontractor [120 h]; Rough Carpenter [120 h]; Finish Carpenter [120 h]; Millwork Subcontractor [120 h]; Drywall Subcontractor [120 h]; Floor and Carpet Layer [120 h]; Painter [40 h]; Plumber [120 h]; HVAC [120 h]; Electrician [120 h] | 65,320 |  |
| EC2120 |  | Unit Finishes Building South - Floor 2 |  | 246d | 2012-02-29 | 2013-02-06 | EC2070 SS+5d | 289d | 0d |  | Finishes & Fit-out Subcontractor [120 h]; Rough Carpenter [120 h]; Finish Carpenter [120 h]; Millwork Subcontractor [120 h]; Drywall Subcontractor [120 h]; Floor and Carpet Layer [120 h]; Painter [40 h]; Plumber [120 h]; HVAC [120 h]; Electrician [120 h] | 65,320 |  |
| EC2150 |  | Unit Finishes Building North - Floor 3 |  | 246d | 2012-03-07 | 2013-02-13 | EC2120 SS+5d, EC2040 FF+40d | 289d | 0d |  | Finishes & Fit-out Subcontractor [120 h]; Rough Carpenter [120 h]; Finish Carpenter [120 h]; Millwork Subcontractor [120 h]; Drywall Subcontractor [120 h]; Floor and Carpet Layer [120 h]; Painter [40 h]; Plumber [120 h]; HVAC [120 h]; Electrician [120 h] | 65,320 |  |
| EC2170 |  | Unit Finishes Building South - Floor 3 |  | 246d | 2012-03-14 | 2013-02-20 | EC2150 SS+5d | 289d | 0d |  | Finishes & Fit-out Subcontractor [120 h]; Rough Carpenter [120 h]; Finish Carpenter [120 h]; Millwork Subcontractor [120 h]; Drywall Subcontractor [120 h]; Floor and Carpet Layer [120 h]; Painter [40 h]; Plumber [120 h]; HVAC [120 h]; Electrician [120 h] | 65,320 |  |
| EC2200 |  | Unit Finishes Building North - Floor 4 |  | 243d | 2012-03-21 | 2013-02-22 | EC2170 SS+5d | 289d | 0d |  | Finishes & Fit-out Subcontractor [120 h]; Rough Carpenter [120 h]; Finish Carpenter [120 h]; Millwork Subcontractor [120 h]; Drywall Subcontractor [120 h]; Floor and Carpet Layer [120 h]; Painter [40 h]; Plumber [120 h]; HVAC [120 h]; Electrician [120 h] | 65,320 |  |
| EC2210 |  | Unit Finishes Building South - Floor 4 |  | 243d | 2012-03-28 | 2013-03-01 | EC2200 SS+5d | 289d | 0d |  | Finishes & Fit-out Subcontractor [120 h]; Rough Carpenter [120 h]; Finish Carpenter [120 h]; Millwork Subcontractor [120 h]; Drywall Subcontractor [120 h]; Floor and Carpet Layer [120 h]; Painter [40 h]; Plumber [120 h]; HVAC [120 h]; Electrician [120 h] | 65,320 |  |
| EC2410 |  | Final Inspections and Punchlist |  | 90d | 2013-03-04 | 2013-07-05 | EC2030, EC2150, EC2210, EC2000, EC2070, EC2120, EC2170, EC2200 | 289d | 0d |  | Finishes & Fit-out Subcontractor [90 h]; Drywall Subcontractor [90 h]; Floor and Carpet Layer [90 h]; Painter [30 h]; Plumber [90 h]; HVAC [90 h]; Electrician [90 h] | 32,610 |  |
|  | 5 | **Courtyard** |  |  | 2012-12-10 | 2013-05-16 |  |  |  |  |  |  |  |
| EC2330 |  | Courtyard Walks and Amenities |  | 114d | 2012-12-10 | 2013-05-16 | EC2300 | 325d | 36d |  | Landscaping Subcontractor [900 h] | 36,000 |  |
|  | 5 | **Garage 1** |  |  | 2011-06-08 | 2013-04-12 |  |  |  |  |  |  |  |
| EC1420 |  | Start Garage | milestone | 5d | 2011-06-08 | 2011-06-08 |  | 177d | 0d | as late as possible |  |  | Key MS |
| EC1430 |  | Shop Drawings, Review & Approval |  | 90d | 2011-06-15 | 2011-10-18 | EC1420 | 167d | 0d | as late as possible | Concrete Foundation Subcontractor [377.49 h]; Project Managers [390.51 h] | 57,274.58 |  |
| EC1810 |  | Fab & Delivery |  | 90d | 2011-10-19 | 2012-02-21 | EC1430 | 167d | 0d | as late as possible | Concrete Foundation Subcontractor [283.12 h]; Project Managers [292.88 h] | 42,955.93 |  |
| EC2090 |  | Erect Precast Structure |  | 120d | 2012-02-22 | 2012-08-07 | EC2020 FS+5d, EC1810 | 167d | 0d |  | Concrete Foundation Subcontractor [440.47 h]; Project Managers [279.53 h] | 58,023.53 |  |
| EC2280 |  | Fire Protection and Lighting |  | 90d | 2012-08-08 | 2012-12-11 | EC2090 | 349d | 0d |  | Concrete Foundation Subcontractor [150 h]; Fire Suppression Subcontractor [150 h]; Electrician [150 h]; Project Managers [150 h] | 49,500 |  |
| EC2310 |  | Finishes, Barrier Cables & Striping |  | 90d | 2012-11-14 | 2013-03-19 | EC2280 FS-20d | 349d | 0d |  | Concrete Foundation Subcontractor [480 h]; Project Managers [480 h] | 72,000 |  |
| EC2380 |  | Punchlist Garage |  | 18d | 2013-03-20 | 2013-04-12 | EC2310 | 349d | 0d |  | Concrete Foundation Subcontractor [96 h]; Project Managers [144 h] | 16,800 |  |
| EC2390 |  | Complete Garage 1 | milestone | 0d | 2013-04-12 | 2013-04-12 | EC2400 | 349d |  |  |  |  | Key MS |
| EC2400 |  | Complete Garage | milestone | 0d | 2013-04-12 | 2013-04-12 | EC2310, EC2380 | 349d | 0d |  |  |  | Key MS |
|  | 6 | **Garage 2** |  |  | 2010-09-01 | 2012-09-18 |  |  |  |  |  |  |  |
| EC1020 |  | Start Garage | milestone | 0d | 2010-09-01 | 2010-09-01 |  | 497d | 0d | as late as possible |  |  | Key MS |
| EC1030 |  | Shop Drawings, Review and Approval |  | 90d | 2010-09-01 | 2011-01-04 | EC1020 | 497d | 0d | as late as possible | Concrete Foundation Subcontractor [377.49 h]; Project Managers [390.51 h] | 57,274.58 |  |
| EC1180 |  | Fab & Delivery |  | 90d | 2011-01-05 | 2011-05-10 | EC1030 | 497d | 0d | as late as possible | Concrete Foundation Subcontractor [288 h]; Project Managers [288 h] | 43,200 |  |
| EC1280 |  | Erect Precast Structure |  | 120d | 2011-05-11 | 2011-10-25 | EC1180 | 497d | 0d |  | Concrete Foundation Subcontractor [345.97 h]; Project Managers [374.03 h] | 53,298.7 |  |
| EC1590 |  | Fire Protection and Lighting |  | 90d | 2011-10-26 | 2012-02-28 | EC1280 | 497d | 0d |  | Concrete Foundation Subcontractor [148.72 h]; Fire Suppression Subcontractor [148.72 h]; Electrician [148.72 h]; Project Managers [153.85 h] | 49,333.33 |  |
| EC1680 |  | Finishes and Striping |  | 105d | 2012-02-01 | 2012-06-26 | EC1590 FS-20d | 497d | 0d |  | Concrete Foundation Subcontractor [480 h]; Project Managers [480 h] | 72,000 |  |
| EC2060 |  | Punch List Garage |  | 60d | 2012-06-27 | 2012-09-18 | EC1680 | 497d | 0d |  | Concrete Foundation Subcontractor [120 h]; Project Managers [120 h] | 18,000 |  |
| EC2180 |  | Complete Garage 2 | milestone | 0d | 2012-09-18 | 2012-09-18 | EC2190 | 497d |  |  |  |  | Key MS |
| EC2190 |  | Complete Garage | milestone | 0d | 2012-09-18 | 2012-09-18 | EC1680, EC2060 | 497d | 0d |  |  |  | Key MS |

Notes:
- EC2090: Anticipated Problems: jdfpje dkdl;sm / Lessons Learned: ï»¿ / Steps: Masonry; Colar Beam; Roof Trusses; Widows & Doors; Wall Finishes; Roof Membrane & Tiles; Plumbing; Electrical; HVAC; Lockup; FF&E; Tile Flooring

| ID | WBS | Activity | Duration | Start | Finish | Predecessors | Total float | Free float | Resources | Cost |
| --- | --- | --- | --- | --- | --- | --- | --- | --- | --- | --- |
|  | 7 | **Roads, Utilities & Pavers** |  | 2010-09-01 | 2013-04-25 |  |  |  |  |  |
| EC1000 |  | Curbing | 90d | 2010-09-01 | 2011-01-04 |  | 794d | 0d | Paving & Roadways Subcontractor [720 h] | 93,600 |
| EC1040 |  | Electric to Building 4 Power Vault | 90d | 2010-09-01 | 2011-01-04 |  | 942d |  | Electrician [720 h] | 68,400 |
| EC1050 |  | Electric to Building 3 Power Vault | 87d | 2010-09-01 | 2010-12-30 |  | 945d |  | Electrician [696 h] | 66,120 |
| EC1100 |  | Storm Drainage Site Work | 90d | 2010-09-01 | 2011-01-04 | EC1080 | 45d | 0d | Utilities Subcontractor [720 h] | 75,600 |
| EC1110 |  | Site Electrical Work & Temp Power | 15d | 2010-09-01 | 2010-09-21 | EC1100 SS | 45d |  | Electrician [120 h] | 11,400 |
| EC1130 |  | Walkways | 84d | 2010-09-15 | 2011-01-10 | EC1000 SS+10d | 794d | 0d | Landscaping Subcontractor [672 h] | 26,880 |
| EC1200 |  | Roadway Pavers | 84d | 2011-01-11 | 2011-05-06 | EC1130 | 794d | 0d | Landscaping Subcontractor [528 h] | 21,120 |
| EC1270 |  | Finish Paving, Striping and Signs | 60d | 2011-05-09 | 2011-07-29 | EC1000, EC1200, EC1130 | 794d |  | Paving & Roadways Subcontractor [480 h] | 62,400 |
| EC1440 |  | Electric to Building 2 Power Vault | 114d | 2011-09-01 | 2012-02-07 | EC1100, EC1350 | 542d | 45d | Electrician [912 h] | 86,640 |
| EC1750 |  | Electric to Building 1 Power Vault | 87d | 2011-10-17 | 2012-02-14 | EC1640 | 495d | 72d | Electrician [696 h] | 66,120 |
| EC1610 |  | Curbs & Paving | 72d | 2011-10-26 | 2012-02-02 | EC1280 | 660d |  | Paving & Roadways Subcontractor [576 h] | 74,880 |
| EC2250 |  | Fountain/Water Feature | 144d | 2012-08-02 | 2013-02-19 | EC2090 FS-4d | 387d |  | Pool Installation Subcontractor [1152 h] | 120,960 |
| EC2260 |  | Entry Feature/Sign Wall | 129d | 2012-08-08 | 2013-02-04 | EC2140, EC2090 | 398d |  | FF&E Specialties [1032 h] | 55,728 |
| EC2290 |  | Curbs & Paving | 90d | 2012-08-08 | 2012-12-11 | EC2140, EC2090 | 422d |  | Paving & Roadways Subcontractor [720 h] | 93,600 |
| EC2340 |  | Curbs & Paving | 99d | 2012-12-10 | 2013-04-25 | EC2320 | 340d | 51d | Paving & Roadways Subcontractor [792 h] | 102,960 |
|  | 8 | **Landscape & Irrigation** |  | 2011-04-13 | 2014-08-14 |  |  |  |  |  |
| EC1600 |  | Site Cleanup | 60d | 2011-04-13 | 2011-07-05 | EC1130 FS+5d, EC1000 SS+40d, EC1000 FS+70d | 812d |  | Landscaping Subcontractor [480 h] | 19,200 |
| EC2360 |  | Landscape & Irrigation | 360d | 2013-03-29 | 2014-08-14 | EC2140, EC2290 FF+15d, EC2270 FS-6d, EC2090 | 0d |  | Landscaping Subcontractor [227.03 h]; Project Managers [972.97 h] | 57,729.73 |

## Activity codes

| Code | Value | Meaning |
| --- | --- | --- |
| Key Milestones | Key MS | Key Milestones |

## Issues

| Issue | Status | Raised | Activity | Notes |
| --- | --- | --- | --- | --- |
| Unit Finishes Experiencing Productivity Delays | IS_Open | 2005-01-17 | EC1550 |  |
| Forecast Overrun | IS_Open | 2005-01-19 | EC1550 | Jeff: / I noticed that the forecast for Autumn Breezes shows a $512,000 cost overrun. I dug into it a little bit and found the problem area is in Building 1 Interior Finishes . I remember you telling me that we were having some problems with that subcontractor's productivity. Is this still the case? We are only 6 months into this project and I don't want this problem to grow. Can you fill me in on what is happening and you and I can work together to resolve it. / Thanks for your help and hard work! / Bruce / V.P. of Construction |
| Finish Date Variance (days) is -6d on WBS: Harbour Pointe.1.2 | IS_Open | 2007-07-01 |  | ï»¿ |
| Finish Date Variance (days) is -36d on WBS: Harbour Pointe.5 | IS_Open | 2007-07-01 |  | ï»¿ |
| Building 2 Subject To Delay | IS_Open | 2007-04-09 |  | This is an issue connected with productivity delays on Unit / Finishes in Building 1. Building 2 first floor finishes are to be completed by / the same subcontractor that is experience delays now. Recommend official / correspondence to Finshes Subcontractor and consider augmenting crews in / Building 2 to pick-up delay. |
| Finish Date Variance (days) is -21d on WBS: Harbour Pointe.2.4 | IS_Open | 2007-07-01 |  | ï»¿ |
| Finish Date Variance (days) is -21d on WBS: Harbour Pointe.2.5 | IS_Open | 2007-07-01 |  | ï»¿ |
| Finish Date Variance (days) is -21d on WBS: Harbour Pointe.2.3 | IS_Open | 2007-07-01 |  | ï»¿ |
| Finish Date Variance (days) is -26d on WBS: Harbour Pointe.8 | IS_Open | 2007-07-01 |  | ï»¿ |
