# Melrose - Plant Expansion & Modernization

Schedule from Primavera P6, 2010-07-01 to 2012-01-13, data date 2011-04-30, costs in USD, A marks actual dates.
ï»¿ / ï»¿

## Calendars

- Trades - 5 Day Workweek: Mon-Fri 08:00-12:00, 13:00-17:00; Sat-Sun off. Exceptions (off unless hours are given): 2010-07-05, 2010-09-06, 2010-11-25, 2010-12-24, 2010-12-31, 2011-05-30, 2011-07-04, 2011-09-05, 2011-11-24, 2011-12-26, 2012-01-02.

## Resources

| Resource | Group | Rate | Notes |
| --- | --- | --- | --- |
| Automation Systems Engineer | labor | 80 | ï»¿ |
| Design Engineer | labor | 82 | ï»¿ |
| Owen McGuire, Project Manager | labor | 65 | ï»¿ |
| Project Managers | labor | 50 | ï»¿ |
| Field Engineer | labor | 77 | ï»¿ |
| Field Eng-Senior | labor | 95 | ï»¿ |
| Field Eng-Assistant | labor | 45 | ï»¿ |
| Electrician | labor | 95 | ï»¿ |
| Plumber | labor | 55 | ï»¿ |
| Fabrication | labor | 64 | ï»¿ |
| Concrete Finisher | labor | 58 | ï»¿ |
| Excavator | labor | 70 | ï»¿ |
| Laborer-Construction | labor | 35 | ï»¿ |
| Ironworker | labor | 55 | ï»¿ |
| Rough Carpenter | labor | 45 | ï»¿ |
| Finish Carpenter | labor | 67 | ï»¿ |
| Floor and Carpet Layer | labor | 45 | ï»¿ |
| Operator | labor | 60 | ï»¿ |
| Elevator Installer | labor | 105 | ï»¿ |

## Schedule

| ID | WBS | Activity | Type | Duration | Start | Finish | Predecessors | Complete | Planned start | Planned finish | Resources | Cost | Actual cost | Department | Responsibility | Phase | Item | Project ID | Step | Key Milestones |
| --- | --- | --- | --- | --- | --- | --- | --- | --- | --- | --- | --- | --- | --- | --- | --- | --- | --- | --- | --- | --- |
|  | Auto | **Automated System** |  |  | 2010-07-01 | 2011-07-14 |  |  |  |  |  |  |  |  |  |  |  |  |  |  |
|  | DesEng | **Design Engineering** |  |  | 2010-07-01 | 2010-09-08 |  |  |  |  |  |  |  |  |  |  |  |  |  |  |
| MN1000 |  | Define System Requirements |  | 5d | 2010-07-01 A | 2010-07-08 A |  | 100% | 2010-07-01 | 2010-07-07 | Automation Systems Engineer [37.03 h] | 2,962.08 | 3,600 | ENG | MASON | DESGN | ASDSG | AS |  |  |
| MN1010 |  | System Design |  | 40d | 2010-07-08 A | 2010-08-31 A | MN1000 | 100% | 2010-07-08 | 2010-09-01 | Design Engineer [296.21 h]; Automation Systems Engineer [296.21 h] | 47,985.7 | 47,489.06 | ENG | MASON | DESGN | ASDSG | AS |  |  |
| MN1120 |  | Prepare Drawings for Temp Control Equipment |  | 5d | 2010-08-19 A | 2010-08-24 A | MN1010 FS-10d | 100% | 2010-08-19 | 2010-08-25 | Automation Systems Engineer [37.03 h] | 2,962.08 | 2,800 | ENG | MASON | DESGN | TEMPC | AS | DRAW |  |
| MN1130 |  | Prepare Drawings for System Controller |  | 5d | 2010-08-19 A | 2010-08-25 A | MN1010 FS-10d | 100% |  |  | Automation Systems Engineer [37.03 h] | 2,962.08 | 2,962.08 | ENG | MASON | DESGN | SYSTC | AS | DRAW |  |
| MN1180 |  | Review and Approve Temp Control Equipment |  | 11d | 2010-08-26 A | 2010-09-08 A | MN1120 | 100% | 2010-08-26 | 2010-09-09 | Automation Systems Engineer [74.05 h]; Project Managers [74.05 h]; Automation Systems Engineer [74 h] | 15,546.76 | 15,644.16 | ENG | EVANS | DESGN | TEMPC | AS | APPRV |  |
| MN1190 |  | Review and Approve System Controller |  | 10d | 2010-08-26 A | 2010-09-08 A | MN1130 | 100% |  |  | Automation Systems Engineer [37.03 h]; Project Managers [37.03 h] | 4,813.38 | 4,912.08 | ENG | EVANS | DESGN | SYSTC | AS | APPRV |  |
| MN1270 |  | Approve System Design |  | 5d | 2010-09-01 A | 2010-09-07 A | MN1010 | 100% |  |  | Owen McGuire, Project Manager [37.03 h] | 2,406.69 | 2,275 | ENG | MASON | DESGN | ASDSG | AS |  |  |
|  | SysEng | **System Engineering** |  |  | 2010-09-08 | 2011-03-31 |  |  |  |  |  |  |  |  |  |  |  |  |  |  |
| MN1300 |  | Site Preparation |  | 2d | 2010-09-08 A | 2010-09-09 A | MN1270 | 100% |  |  | Field Eng-Assistant [3.7 h] | 166.62 | 166.62 | ISD | MILLS | SYS1 | HRDWR | AS |  |  |
| MN1360 |  | Installation Begins | milestone | 0d | 2010-09-10 A | 2010-09-10 A | MN1300 | 100% |  |  |  |  |  | ISD | MILLS | SYS1 | HRDWR | AS |  | Key MS |
| MN1370 |  | Install Electrical Power |  | 29.92d | 2010-09-10 A | 2010-10-20 A | MN1300 | 100% | 2010-09-10 | 2010-10-21 | Electrician [355.45 h] | 33,767.71 | 33,250 | ISD | MILLS | SYS1 | HRDWR | AS |  |  |
| MN1760 |  | Test & Debug Line A |  | 24d | 2011-02-01 A | 2011-03-03 A | MN1590 | 100% | 2011-02-01 | 2011-03-04 | Field Engineer [88.86 h]; Automation Systems Engineer [44.88 h] | 10,432.8 | 9,745 | ISD | MILLS | SYS1 | HRDWR | AS |  |  |
| MN1770 |  | Test & Debug Line B |  | 24d | 2011-02-01 A | 2011-03-04 A | MN1590 | 100% |  |  | Automation Systems Engineer [44.88 h]; Field Eng-Senior [44.43 h] | 7,811.36 | 8,560 | ISD | MILLS | SYS1 | HRDWR | AS |  |  |
| MN1850 |  | Start-Up Line B |  | 1d | 2011-03-09 A | 2011-03-09 A | MN1790 | 100% |  |  | Automation Systems Engineer [3.7 h] | 296.21 | 560 | ISD | MILLS | SYS1 | HRDWR | AS |  |  |
| MN1870 |  | Path Refinement and Shakedown-Line B |  | 10d | 2011-03-10 A | 2011-03-23 A | MN1850 | 100% |  |  | Field Engineer [37.03 h] | 2,851 | 3,003 | ISD | MILLS | SYS1 | HRDWR | AS |  |  |
| MN1840 |  | Pilot Start Line A |  | 1d | 2011-03-11 A | 2011-03-11 A | MN1810 | 100% |  |  | Automation Systems Engineer [3.7 h] | 296.21 | 400 | ISD | MILLS | SYS1 | HRDWR | AS |  |  |
| MN1860 |  | Path Refinement and Shakedown-Line A |  | 10d | 2011-03-14 A | 2011-03-25 A | MN1840 | 100% |  |  | Field Engineer [37.03 h] | 2,851 | 3,080 | ISD | MILLS | SYS1 | HRDWR | AS |  |  |
|  | TempCtl | **Temperature Control Equipment** |  |  | 2010-09-10 | 2010-11-18 |  |  |  |  |  |  |  |  |  |  |  |  |  |  |
| MN1310 |  | Prepare and Solicit Bids for Temp Control Equip |  | 10d | 2010-09-10 A | 2010-09-23 A | MN1180 | 100% |  |  | Automation Systems Engineer [43.56 h] | 3,484.8 | 3,680 | PCH | FOLEY | PROCR | TEMPC | AS | WRITE |  |
| MN1430 |  | Review Bids for Temp Control Equipment |  | 3d | 2010-09-24 A | 2010-09-28 A | MN1310 | 100% |  |  | Project Managers [22.22 h] | 1,110.78 | 1,110.78 | PCH | FOLEY | PROCR | TEMPC | AS | BIDS |  |
| MN1450 |  | Award Contract for Temp Control Equipment |  | 1d | 2010-09-29 A | 2010-09-29 A | MN1430 | 100% |  |  |  |  |  | PCH | FOLEY | PROCR | TEMPC | AS | AWARD |  |
| MN1460 |  | Fabricate & Deliver Temp Control Equipment |  | 16d | 2010-10-01 A | 2010-10-22 A | MN1450 | 100% |  |  | Fabrication [118.48 h] | 7,582.92 | 7,680 | PCH | VENDR | PROCR | TEMPC | AS | FABDE |  |
| MN1520 |  | Install Temperature Control Equipment |  | 20d | 2010-10-25 A | 2010-11-18 A | MN1390 SS+5d, MN1370, MN1380, MN1460 | 100% | 2010-10-25 | 2010-11-19 | Field Eng-Senior [74.05 h]; Electrician [185.13 h] | 24,622.29 | 23,275 | ISD | MILLS | SYS1 | HRDWR | AS |  |  |

| ID | WBS | Activity | Type | Duration | Start | Finish | Predecessors | Complete | Remaining | Planned start | Planned finish | Total float | Free float | Resources | Cost | Actual cost | Department | Responsibility | Phase | Item | Project ID | Step | Key Milestones |
| --- | --- | --- | --- | --- | --- | --- | --- | --- | --- | --- | --- | --- | --- | --- | --- | --- | --- | --- | --- | --- | --- | --- | --- |
|  | RobotCtl | **Robot Controller** |  |  | 2010-09-10 | 2011-03-31 |  |  |  |  |  |  |  |  |  |  |  |  |  |  |  |  |  |
| MN1380 |  | Install Robot Base |  | 18d | 2010-09-10 A | 2010-10-05 A | MN1300 | 100% |  |  |  |  |  | Field Eng-Senior [66.65 h] | 6,331.45 | 6,175 | ISD | MILLS | SYS1 | HRDWR | AS |  |  |
| MN1390 |  | Run Sealant, Air, and Water Piping |  | 12.15d | 2010-09-10 A | 2010-09-28 A | MN1300 | 100% |  |  |  |  |  | Plumber [96.27 h] | 5,294.72 | 5,060 | ISD | MILLS | SYS1 | HRDWR | AS |  |  |
| MN1560 |  | Set & Connect Robots |  | 18d | 2010-11-23 A | 2010-12-20 A | MN1520 | 100% |  | 2010-11-23 | 2010-12-16 |  |  | Field Engineer [133.29 h] | 10,263.61 | 11,165 | ISD | MILLS | SYS1 | HRDWR | AS |  |  |
| MN1790 |  | Trim Robot Paths Line B |  | 24d | 2011-02-01 A | 2011-03-04 A | MN1770 FF | 100% |  |  |  |  |  | Automation Systems Engineer [44.88 h]; Field Engineer [88.86 h] | 10,432.8 | 10,432.8 | ISD | MILLS | SYS1 | HRDWR | AS |  |  |
| MN1810 |  | Trim Robot Paths Line A |  | 15d | 2011-02-14 A | 2011-03-04 A | MN1760 FF | 100% |  |  |  |  |  | Field Eng-Senior [28.05 h]; Automation Systems Engineer [28.05 h] | 4,908.75 | 4,908.75 | ISD | MILLS | SYS1 | HRDWR | AS |  |  |
| MN1940 |  | Calibrate Robot Controller & Power Up |  | 1d | 2011-03-30 A | 2011-03-31 A | MN1920 | 100% |  | 2011-03-30 | 2011-03-30 |  |  | Field Engineer [5.55 h] | 427.65 | 616 | ISD | MILLS | SYS2 | SFTWR | AS |  |  |
|  | SysCtl | **System Controller** |  |  | 2010-09-09 | 2011-03-07 |  |  |  |  |  |  |  |  |  |  |  |  |  |  |  |  |  |
| MN1320 |  | Prepare and Solicit Bids for System Controller |  | 5d | 2010-09-09 A | 2010-09-15 A | MN1190 | 100% |  |  |  |  |  | Automation Systems Engineer [22.22 h] | 1,777.25 | 1,840 | PCH | FOLEY | PROCR | SYSTC | AS | WRITE |  |
| MN1400 |  | Review Bids for System Controller |  | 4d | 2010-09-16 A | 2010-09-21 A | MN1320 | 100% |  |  |  |  |  | Project Managers [11.11 h] | 555.39 | 500 | PCH | FOLEY | PROCR | SYSTC | AS | BIDS |  |
| MN1420 |  | Award Contract for System Controller |  | 1d | 2010-09-22 A | 2010-09-22 A | MN1400 | 100% |  |  |  |  |  |  |  |  | PCH | FOLEY | PROCR | SYSTC | AS | AWARD |  |
| MN1440 |  | Fabricate and Deliver System Controller |  | 60d | 2010-09-23 A | 2010-12-15 A | MN1420 | 100% |  |  |  |  |  | Fabrication [444.31 h] | 28,435.97 | 28,435.97 | PCH | VENDR | PROCR | SYSTC | AS | FABDE |  |
| MN1590 |  | Install System & Misc. Components |  | 30d | 2010-12-17 A | 2011-01-31 A | MN1560 | 100% |  | 2010-12-17 | 2011-01-27 |  |  | Field Eng-Assistant [112.2 h] | 5,049 | 5,400 | ISD | MILLS | SYS1 | HRDWR | AS |  |  |
| MN1780 |  | Install System Controller |  | 16d | 2011-02-01 A | 2011-02-22 A | MN1590, MN1440 | 100% |  |  |  |  |  | Field Eng-Senior [59.24 h] | 5,627.95 | 5,890 | ISD | MILLS | SYS1 | HRDWR | AS |  |  |
| MN1800 |  | Install Bar Rails |  | 20d | 2011-02-08 A | 2011-03-07 A | MN1780 SS+5d | 100% |  |  |  |  |  | Field Eng-Assistant [148.1 h] | 6,664.68 | 6,664.68 | ISD | MILLS | SYS1 | HRDWR | AS |  |  |
|  | SoftEng | **Software Engineering** |  |  | 2011-03-28 | 2011-07-14 |  |  |  |  |  |  |  |  |  |  |  |  |  |  |  |  |  |
| MN1920 |  | Install Processor/Software/Data Tapes |  | 2d | 2011-03-28 A | 2011-03-29 A | MN1930 | 100% |  |  |  |  |  | Automation Systems Engineer [14.81 h] | 1,184.83 | 1,360 | ISD | HARIS | SYS2 | SFTWR | AS |  |  |
| MN1930 |  | Production Start | milestone | 0d | 2011-03-28 A | 2011-03-28 A | MN1860, MN1870, MN1800 | 100% |  |  |  |  |  |  |  |  | ISD | EVANS | SYS2 | SFTWR | AS |  | Key MS |
| MN1950 |  | Load System Software |  | 20d | 2011-04-04 A | 2011-05-31 | MN1940 |  | 22d | 2011-04-01 | 2011-04-28 | 131d | 0d |  |  |  | ISD | HARIS | SYS2 | SFTWR | AS |  |  |
| MN2030 |  | Program |  | 0d | 2011-06-01 | 2011-06-01 | MN2050 |  |  |  |  | 131d | 0d |  |  |  | ISD | HARIS | SYS2 | SFTWR | AS |  |  |
| MN2040 |  | Test Software |  | 18d | 2011-06-01 | 2011-06-24 | MN2030 |  |  |  |  | 131d | 0d |  |  |  | ISD | HARIS | SYS2 | SFTWR | AS |  |  |
| MN2050 |  | Manual Operation Ready |  | 0d | 2011-06-01 | 2011-06-01 | MN1950 |  |  |  |  | 131d | 0d |  |  |  | ISD | EVANS | SYS2 | SFTWR | AS |  |  |
| MN2110 |  | Debug Software |  | 1d | 2011-06-27 | 2011-06-27 | MN2040 |  |  |  |  | 131d | 0d |  |  |  | ISD | HARIS | SYS2 | SFTWR | AS |  |  |
| MN2120 |  | Automatic Operation Ready |  | 1d | 2011-06-28 | 2011-06-28 | MN2110 |  |  |  |  | 131d | 0d |  |  |  | ISD | HARIS | SYS2 | SFTWR | AS |  |  |
| MN2100 |  | Startup Procedure Development |  | 3d | 2011-06-29 | 2011-07-01 | MN2120 |  |  |  |  | 131d | 0d | Automation Systems Engineer [22.22 h] | 1,777.25 |  | ISD | EVANS | SYS2 | SFTWR | AS |  |  |
| MN2170 |  | System Buyoff | milestone | 0d | 2011-07-14 | 2011-07-14 | MN2140 |  |  |  |  | 131d |  |  |  |  | ISD | EVANS | SYS2 | SFTWR | AS |  | Key MS |

| ID | WBS | Activity | Type | Duration | Start | Finish | Predecessors | Complete | Planned start | Planned finish | Total float | Free float | Resources | Cost | Actual cost | Department | Responsibility | Phase | Item | Project ID | Step | Key Milestones |
| --- | --- | --- | --- | --- | --- | --- | --- | --- | --- | --- | --- | --- | --- | --- | --- | --- | --- | --- | --- | --- | --- | --- |
|  | Train | **Training** |  |  | 2011-07-04 | 2011-07-14 |  |  |  |  |  |  |  |  |  |  |  |  |  |  |  |  |
|  | Manual | **Manuals** |  |  | 2011-07-04 | 2011-07-14 |  |  |  |  |  |  |  |  |  |  |  |  |  |  |  |  |
| MN2140 |  | Training Manuals/System Operation |  | 9d | 2011-07-04 | 2011-07-14 | MN2100 |  |  |  | 131d | 0d | Project Managers [11.11 h]; Automation Systems Engineer [66.65 h] | 5,887.13 |  | ISD | EVANS | SYS2 | SFTWR | AS |  |  |
|  | Bldg | **Office Building Addition** |  |  | 2010-07-01 | 2011-07-04 |  |  |  |  |  |  |  |  |  |  |  |  |  |  |  |  |
|  | DesEng | **Design and Engineering** |  |  | 2010-07-01 | 2010-08-11 |  |  |  |  |  |  |  |  |  |  |  |  |  |  |  |  |
| MN1020 |  | Design Building Addition |  | 15d | 2010-07-01 A | 2010-07-21 A |  | 100% |  |  |  |  | Design Engineer [55.54 h] | 4,554.2 | 4,264 | ENG | MASON | DESGN | BADSG | BA |  |  |
| MN1030 |  | Review and Approve Designs |  | 2d | 2010-07-22 A | 2010-07-23 A | MN1020 | 100% |  |  |  |  | Design Engineer [7.41 h] | 607.23 | 738 | ENG | ACME | DESGN | BADSG | BA |  |  |
| MN1070 |  | Assemble Technical Data for Heat Pump |  | 3d | 2010-07-26 A | 2010-07-28 A | MN1030 | 100% |  |  |  |  | Design Engineer [16.66 h] | 1,366.26 | 1,366.26 | ENG | MASON | DESGN | PUMP | BA | DRAW |  |
| MN1090 |  | Review Technical Data on Heat Pumps |  | 10d | 2010-07-29 A | 2010-08-11 A | MN1070 | 100% |  |  |  |  | Design Engineer [18.51 h] | 1,518.07 | 1,640 | ENG | MASON | DESGN | PUMP | BA | APPRV |  |
|  | Found | **Foundation** |  |  | 2010-07-26 | 2010-10-18 |  |  |  |  |  |  |  |  |  |  |  |  |  |  |  |  |
| MN1040 |  | Begin Building Construction | milestone | 0d | 2010-07-26 A | 2010-07-26 A | MN1030 | 100% |  |  |  |  |  |  |  | CON | NOLAN | FOUND | FOUND | BA |  | Key MS |
| MN1050 |  | Site Preparation |  | 18d | 2010-07-26 A | 2010-08-18 A | MN1040 | 100% |  |  |  |  | Excavator [799.76 h] | 55,983.31 | 54,600 | CON | NOLAN | FOUND | FOUND | BA |  |  |
| MN1200 |  | Excavation |  | 10d | 2010-08-18 A | 2010-08-31 A | MN1050 | 100% |  |  |  |  | Excavator [352 h] | 24,640 | 22,400 | CON | NOLAN | FOUND | FOUND | BA |  |  |
| MN1330 |  | Install Underground Water Lines |  | 5d | 2010-09-01 A | 2010-09-07 A | MN1200 | 100% |  |  |  |  | Plumber [185.13 h] | 10,182.15 | 9,900 | CON | NOLAN | FOUND | FOUND | BA |  |  |
| MN1340 |  | Install Underground Electric Conduit |  | 5d | 2010-09-01 A | 2010-09-07 A | MN1200 | 100% |  |  |  |  | Electrician [55.54 h] | 5,276.2 | 5,276.2 | CON | NOLAN | FOUND | FOUND | BA |  |  |
| MN1410 |  | Form/Pour Concrete Footings |  | 10d | 2010-09-08 A | 2010-09-22 A | MN1340, MN1330 | 100% | 2010-09-08 | 2010-09-21 |  |  | Laborer-Construction [74.05 h]; Ironworker [296.21 h]; Rough Carpenter [296.21 h] | 32,212.62 | 31,591.82 | CON | NOLAN | FOUND | FOUND | BA |  |  |
| MN1470 |  | Concrete Foundation Walls |  | 10d | 2010-09-22 A | 2010-10-05 A | MN1410 | 100% |  |  |  |  | Laborer-Construction [592.42 h]; Concrete Finisher [74.05 h]; Rough Carpenter [296.21 h]; Ironworker [296.21 h] | 54,650.38 | 54,971.92 | CON | NOLAN | FOUND | FOUND | BA |  |  |
| MN1480 |  | Form and Pour Slab |  | 5d | 2010-10-08 A | 2010-10-14 A | MN1470 | 100% |  |  |  |  | Laborer-Construction [59.24 h]; Rough Carpenter [29.62 h]; Ironworker [29.62 h]; Concrete Finisher [7.41 h] | 5,465.04 | 5,668.65 | CON | NOLAN | FOUND | FOUND | BA |  |  |
| MN1490 |  | Backfill and Compact Walls |  | 2d | 2010-10-15 A | 2010-10-18 A | MN1480 | 100% |  |  |  |  | Concrete Finisher [14.81 h]; Excavator [59.24 h] | 5,005.92 | 5,129 | CON | NOLAN | FOUND | FOUND | BA |  |  |
| MN1500 |  | Foundation Phase Complete | milestone | 0d | 2010-10-18 A | 2010-10-18 A | MN1490 | 100% |  |  |  |  |  |  |  | CON | NOLAN | FOUND | FOUND | BA |  | Key MS |
|  | Struct | **Structure** |  |  | 2010-10-19 | 2011-01-11 |  |  |  |  |  |  |  |  |  |  |  |  |  |  |  |  |
| MN1510 |  | Erect Structural Frame |  | 20d | 2010-10-19 A | 2010-11-15 A | MN1490 | 100% |  |  |  |  | Ironworker [1481.04 h] | 81,457.2 | 81,950 | CON | NOLAN | STRUC | STRUC | BA |  |  |
| MN1540 |  | Begin Structural Phase | milestone | 0d | 2010-11-16 A | 2010-11-16 A | MN1510 | 100% |  |  |  |  |  |  |  | CON | NOLAN | STRUC | STRUC | BA |  | Key MS |
| MN1550 |  | Floor Decking |  | 14d | 2010-11-16 A | 2010-12-03 A | MN1510 | 100% |  |  |  |  | Ironworker [103.67 h] | 5,702 | 5,702 | CON | NOLAN | STRUC | STRUC | BA |  |  |
| MN1580 |  | Concrete First and Second Floor |  | 15d | 2010-12-07 A | 2010-12-24 A | MN1550 | 100% | 2010-12-07 | 2010-12-27 |  |  | Rough Carpenter [222.16 h]; Ironworker [222.16 h]; Concrete Finisher [111.08 h]; Laborer-Construction [444.31 h] | 44,209.04 | 41,550 | CON | NOLAN | STRUC | STRUC | BA |  |  |
| MN1630 |  | Erect Stairwell and Elevator Walls |  | 10d | 2010-12-28 A | 2011-01-07 A | MN1580 | 100% | 2010-12-28 | 2011-01-10 |  |  | Laborer-Construction [444.31 h] | 15,550.92 | 13,650 | CON | NOLAN | STRUC | STRUC | BA |  |  |
| MN1640 |  | Concrete Basement Slab |  | 10d | 2010-12-28 A | 2011-01-07 A | MN1580 | 100% | 2010-12-28 | 2011-01-10 |  |  | Laborer-Construction [370.26 h]; Rough Carpenter [148.1 h]; Ironworker [148.1 h]; Concrete Finisher [148.1 h] | 36,359.53 | 33,179 | CON | NOLAN | STRUC | STRUC | BA |  |  |
| MN1680 |  | Structure Complete | milestone | 0d | 2011-01-11 A | 2011-01-11 A | MN1640, MN1630 | 100% |  |  |  |  |  |  |  | CON | NOLAN | STRUC | STRUC | BA |  | Key MS |

| ID | WBS | Activity | Type | Duration | Start | Finish | Predecessors | Complete | Planned start | Planned finish | Total float | Resources | Cost | Actual cost | Key Milestones | Department | Responsibility | Phase | Item | Project ID | Step |
| --- | --- | --- | --- | --- | --- | --- | --- | --- | --- | --- | --- | --- | --- | --- | --- | --- | --- | --- | --- | --- | --- |
|  | MechSys | **Mechanical/Electrical Systems** |  |  | 2010-08-13 | 2011-06-30 |  |  |  |  |  |  |  |  |  |  |  |  |  |  |  |
| MN1650 |  | Rough-In Phase Begins | milestone | 0d | 2011-01-10 A | 2011-01-10 A | MN1600 | 100% |  |  |  |  |  |  | Key MS | CON | NOLAN | ROUGH | MECHE | BA |  |
| MN1990 |  | Rough In Complete | milestone | 0d | 2011-05-02 | 2011-05-02 | MN1980, MN1690 |  |  |  | 0d |  |  |  | Key MS | CON | NOLAN | ROUGH | MECHE | BA |  |
|  | Elev | **Elevator** |  |  | 2011-01-11 | 2011-04-14 |  |  |  |  |  |  |  |  |  |  |  |  |  |  |  |
| MN1690 |  | Install Elevator Rails and Equipment |  | 15d | 2011-01-11 A | 2011-01-31 A | MN1630 | 100% |  |  |  | Elevator Installer [111.08 h] | 11,663.19 | 11,663.19 |  | CON | NOLAN | ROUGH | MECHE | BA |  |
| MN2010 |  | Install Elevator Cab and Finishes |  | 2d | 2011-04-13 A | 2011-04-14 A | MN1880, MN1990 | 100% |  |  |  | Elevator Installer [14.81 h] | 1,555.09 | 1,555.09 |  | CON | NOLAN | FINSH | INTFN | BA |  |
|  | HVAC | **HVAC** |  |  | 2010-08-13 | 2011-06-30 |  |  |  |  |  |  |  |  |  |  |  |  |  |  |  |
| MN1140 |  | Prepare and Solicit Bids for Heat Pump |  | 3d | 2010-08-13 A | 2010-08-17 A | MN1090 | 100% |  |  |  |  |  |  |  | PCH | FOLEY | PROCR | PUMP | BA | WRITE |
| MN1160 |  | Review Bids for Heat Pump |  | 2d | 2010-08-18 A | 2010-08-19 A | MN1140 | 100% |  |  |  |  |  |  |  | PCH | FOLEY | PROCR | PUMP | BA | BIDS |
| MN1210 |  | Award Contract for Heat Pump |  | 1d | 2010-08-20 A | 2010-08-20 A | MN1160 | 100% |  |  |  |  |  |  |  | PCH | FOLEY | PROCR | PUMP | BA | AWARD |
| MN1230 |  | Fabricate and Deliver Heat Pump and Controls |  | 90d | 2010-08-23 A | 2010-12-22 A | MN1210 | 100% | 2010-08-23 | 2010-12-24 |  | Fabrication [666.47 h] | 42,653.95 | 41,600 |  | PCH | FOLEY | PROCR | PUMP | BA | FABDE |
| MN1660 |  | Install HVAC Ducts |  | 10d | 2011-01-10 A | 2011-01-25 A | MN1600 | 100% | 2011-01-10 | 2011-01-21 |  |  |  |  |  | CON | NOLAN | ROUGH | MECHE | BA |  |
| MN1890 |  | Insulate Ducts |  | 2d | 2011-03-15 A | 2011-03-16 A | MN1880, MN1660 | 100% |  |  |  |  |  |  |  | CON | NOLAN | ROUGH | MECHE | BA |  |
| MN1910 |  | Set Heat Pump |  | 5d | 2011-03-17 A | 2011-03-23 A | MN1880, MN1890, MN1230 | 100% |  |  |  | Operator [9.35 h] | 561 | 660 |  | CON | NOLAN | ROUGH | MECHE | BA |  |
| MN1980 |  | Startup and Test HVAC |  | 1d | 2011-04-13 A | 2011-04-13 A | MN1970 | 100% | 2011-04-12 | 2011-04-12 |  | Operator [3.74 h] | 224.4 | 224.4 |  | CON | NOLAN | ROUGH | MECHE | BA |  |
| MN2090 |  | Install AC Grills and Registers |  | 5d | 2011-06-02 | 2011-06-08 | MN2070 SS+8d |  |  |  | 2d |  |  |  |  | CON | NOLAN | FINSH | INTFN | BA |  |
| MN2190 |  | Test and Balance HVAC Equipment |  | 1d | 2011-06-30 | 2011-06-30 | MN2180 |  |  |  | 0d | Operator [1.87 h] | 112.2 |  |  | CON | NOLAN | FINSH | INTFN | BA |  |
|  | Plumb | **Plumbing and Electrical** |  |  | 2010-12-16 | 2011-04-12 |  |  |  |  |  |  |  |  |  |  |  |  |  |  |  |
| MN1600 |  | Set Mechanical and Electrical Equipment |  | 15d | 2010-12-16 A | 2011-01-05 A | MN1580 SS+7d | 100% |  |  |  | Operator [28.05 h] | 1,683 | 1,800 |  | CON | NOLAN | ROUGH | MECHE | BA |  |
| MN1710 |  | Rough-In Plumbing/Piping |  | 15d | 2011-01-14 A | 2011-02-07 A | MN1660 SS+4d | 100% | 2011-01-14 | 2011-02-03 |  | Plumber [444.31 h] | 24,437.16 | 26,510 |  | CON | NOLAN | ROUGH | MECHE | BA |  |
| MN1900 |  | Install Wiring and Cable |  | 15d | 2011-03-16 A | 2011-04-06 A | MN1880, MN1710 SS+5d | 100% | 2011-03-15 | 2011-04-04 |  | Electrician [555.39 h] | 52,762.05 | 54,150 |  | CON | NOLAN | ROUGH | MECHE | BA |  |
| MN1970 |  | Connect Equipment |  | 3d | 2011-04-07 A | 2011-04-12 A | MN1900, MN1910 | 100% | 2011-04-07 | 2011-04-11 |  |  |  |  |  | CON | NOLAN | ROUGH | MECHE | BA |  |
|  | ExtFinish | **Exterior Finishes** |  |  | 2010-07-26 | 2011-03-14 |  |  |  |  |  |  |  |  |  |  |  |  |  |  |  |
| MN1820 |  | Close-In Phase Begins | milestone | 0d | 2011-02-25 A | 2011-02-25 A | MN1700 | 100% |  |  |  |  |  |  | Key MS | CON | NOLAN | CLOSE | EXTFN | BA |  |
| MN1880 |  | Building Enclosed | milestone | 0d | 2011-03-14 A | 2011-03-14 A | MN1830, MN1750 | 100% |  |  |  |  |  |  | Key MS | CON | NOLAN | CLOSE | EXTFN | BA |  |

| ID | WBS | Activity | Type | Duration | Start | Finish | Predecessors | Complete | Remaining | Planned start | Planned finish | Total float | Resources | Cost | Actual cost | Department | Responsibility | Phase | Step | Item | Project ID | Key Milestones |
| --- | --- | --- | --- | --- | --- | --- | --- | --- | --- | --- | --- | --- | --- | --- | --- | --- | --- | --- | --- | --- | --- | --- |
|  | Brick | **Brick** |  |  | 2010-07-26 | 2011-02-22 |  |  |  |  |  |  |  |  |  |  |  |  |  |  |  |  |
| MN1080 |  | Assemble Brick Samples |  | 5d | 2010-07-26 A | 2010-07-30 A | MN1030 | 100% |  |  |  |  |  |  |  | PCH | FOLEY | PROCR | DRAW | BRICK | BA |  |
| MN1100 |  | Review and Approve Brick Samples |  | 10d | 2010-08-02 A | 2010-08-13 A | MN1080 | 100% |  |  |  |  | Design Engineer [7.41 h] | 607.23 | 607.23 | ENG | ACME | PROCR | APPRV | BRICK | BA |  |
| MN1150 |  | Prepare and Solicit Bids for Brick Exterior |  | 3d | 2010-08-16 A | 2010-08-18 A | MN1100 | 100% |  |  |  |  |  |  |  | PCH | FOLEY | PROCR | WRITE | BRICK | BA |  |
| MN1220 |  | Review Bids for Brick |  | 3d | 2010-08-19 A | 2010-08-23 A | MN1150 | 100% |  |  |  |  |  |  |  | PCH | FOLEY | PROCR | BIDS | BRICK | BA |  |
| MN1240 |  | Award Contract for Brick |  | 1d | 2010-08-24 A | 2010-08-24 A | MN1220 | 100% |  |  |  |  |  |  |  | PCH | FOLEY | PROCR | AWARD | BRICK | BA |  |
| MN1260 |  | Deliver Brick |  | 60d | 2010-08-25 A | 2010-11-16 A | MN1240 | 100% |  |  |  |  | Fabrication [444.31 h] | 28,435.97 | 28,800 | PCH | FOLEY | PROCR | FABDE | BRICK | BA |  |
| MN1700 |  | Brick Exterior Walls |  | 30d | 2011-01-12 A | 2011-02-22 A | MN1680, MN1260 | 100% |  |  |  |  | Laborer-Construction [3069 h] | 107,415 | 112,385 | CON | NOLAN | CLOSE |  | EXTFN | BA |  |
|  | Roof | **Roof** |  |  | 2011-02-25 | 2011-03-10 |  |  |  |  |  |  |  |  |  |  |  |  |  |  |  |  |
| MN1830 |  | Insulation and Built-up Roofing |  | 10d | 2011-02-25 A | 2011-03-10 A | MN1750 FF, MN1700 | 100% |  |  |  |  | Laborer-Construction [261.36 h] | 9,147.6 | 9,625 | CON | NOLAN | CLOSE |  | EXTFN | BA |  |
|  | DoorWin | **Doors and Windows** |  |  | 2011-01-19 | 2011-02-07 |  |  |  |  |  |  |  |  |  |  |  |  |  |  |  |  |
| MN1740 |  | Install Door and Window Frames |  | 5d | 2011-01-19 A | 2011-01-25 A | MN1700 SS+5d | 100% |  |  |  |  | Finish Carpenter [185.13 h] | 12,403.71 | 12,060 | CON | NOLAN | CLOSE |  | EXTFN | BA |  |
| MN1750 |  | Install Exterior Doors and Windows |  | 10d | 2011-01-26 A | 2011-02-07 A | MN1740 | 100% |  | 2011-01-26 | 2011-02-08 |  | Finish Carpenter [370.26 h] | 24,807.42 | 22,110 | CON | NOLAN | CLOSE |  | EXTFN | BA |  |
|  | IntFinish | **Interior Finishes** |  |  | 2010-07-26 | 2011-07-04 |  |  |  |  |  |  |  |  |  |  |  |  |  |  |  |  |
| MN2000 |  | Drywall in Offices |  | 15d | 2011-04-13 A | 2011-05-20 | MN1880, MN1990 |  | 15d | 2011-04-13 | 2011-05-03 | 0d | Finish Carpenter [888.62 h] | 59,537.81 | 51,925 | CON | NOLAN | FINSH |  | INTFN | BA |  |
| MN2060 |  | Finishes Phase Begins | milestone | 0d | 2011-05-23 | 2011-05-23 | MN2000 |  |  |  |  | 170d |  |  |  | CON | NOLAN | FINSH |  | INTFN | BA | Key MS |
| MN2180 |  | Touch-up and Clean-up |  | 1d | 2011-06-29 | 2011-06-29 | MN2160, MN2150, MN2020, MN2010 |  |  |  |  | 0d | Laborer-Construction [37.03 h]; Finish Carpenter [29.62 h] | 3,280.5 |  | CON | NOLAN | FINSH |  | INTFN | BA |  |
| MN2200 |  | Finishes Milestone | milestone | 0d | 2011-06-30 | 2011-06-30 | MN2190 |  |  |  |  | 0d |  |  |  | CON | NOLAN | FINSH |  | INTFN | BA | Key MS |
| MN2210 |  | Punch List |  | 2d | 2011-07-01 | 2011-07-04 | MN2200 |  |  |  |  | 0d | Laborer-Construction [59.24 h]; Finish Carpenter [59.24 h] | 6,042.64 |  | CON | NOLAN | FINSH |  | INTFN | BA |  |
| MN2220 |  | Building Addition Complete | milestone | 0d | 2011-07-04 | 2011-07-04 | MN2210 |  |  |  |  | 0d |  |  |  | CON | NOLAN | FINSH |  | INTFN | BA | Key MS |
|  | Plumb | **Plumbing and Lighting Fixtures** |  |  | 2011-06-02 | 2011-06-23 |  |  |  |  |  |  |  |  |  |  |  |  |  |  |  |  |
| MN2080 |  | Install Lighting Fixtures |  | 3d | 2011-06-02 | 2011-06-06 | MN2070 SS+8d |  |  |  |  | 4d | Electrician [33.32 h] | 3,165.72 |  | CON | NOLAN | FINSH |  | INTFN | BA |  |
| MN2150 |  | Install Plumbing Fixtures |  | 2d | 2011-06-22 | 2011-06-23 | MN2130 |  |  |  |  | 3d | Plumber [74.05 h] | 4,072.86 |  | CON | NOLAN | FINSH |  | INTFN | BA |  |
|  | Floor | **Floor and Carpeting** |  |  | 2010-07-26 | 2011-06-21 |  |  |  |  |  |  |  |  |  |  |  |  |  |  |  |  |
| MN1060 |  | Assemble and Submit Flooring Samples |  | 7d | 2010-07-26 A | 2010-08-03 A | MN1030 | 100% |  |  |  |  |  |  |  | PCH | FOLEY | PROCR | DRAW | FLOOR | BA |  |
| MN1110 |  | Review and Approve Flooring |  | 10d | 2010-08-05 A | 2010-08-18 A | MN1060 | 100% |  |  |  |  | Design Engineer [7.41 h] | 607.23 | 492 | ENG | ACME | PROCR | APPRV | FLOOR | BA |  |
| MN1170 |  | Prepare and Solicit Bids for Flooring |  | 5d | 2010-08-19 A | 2010-08-25 A | MN1110 | 100% |  |  |  |  |  |  |  | PCH | FOLEY | PROCR | WRITE | FLOOR | BA |  |
| MN1250 |  | Review Bids for Flooring |  | 3d | 2010-08-26 A | 2010-08-30 A | MN1170 | 100% |  |  |  |  |  |  |  | PCH | FOLEY | PROCR | BIDS | FLOOR | BA |  |
| MN1280 |  | Award Contract for Flooring |  | 1d | 2010-09-01 A | 2010-09-01 A | MN1250 | 100% |  |  |  |  |  |  |  | PCH | FOLEY | PROCR | AWARD | FLOOR | BA |  |
| MN1290 |  | Fabricate and Deliver Flooring |  | 60d | 2010-09-02 A | 2010-11-19 A | MN1280 | 100% |  | 2010-09-02 | 2010-11-24 |  | Fabrication [444.31 h] | 28,435.97 | 27,648 | PCH | FOLEY | PROCR | FABDE | FLOOR | BA |  |
| MN2130 |  | Install Floor and Carpeting |  | 7d | 2011-06-13 | 2011-06-21 | MN2090, MN2070, MN1290, MN2080 |  |  |  |  | 0d | Floor and Carpet Layer [148.1 h] | 6,664.68 |  | CON | NOLAN | FINSH |  | INTFN | BA |  |

| ID | WBS | Activity | Type | Duration | Start | Finish | Predecessors | Complete | Remaining | Planned start | Planned finish | Total float | Constraint | Resources | Cost | Actual cost | Department | Responsibility | Phase | Item | Project ID | Step | Key Milestones |
| --- | --- | --- | --- | --- | --- | --- | --- | --- | --- | --- | --- | --- | --- | --- | --- | --- | --- | --- | --- | --- | --- | --- | --- |
|  | Carp | **Carpentry** |  |  | 2011-05-23 | 2011-06-28 |  |  |  |  |  |  |  |  |  |  |  |  |  |  |  |  |  |
| MN2070 |  | Install Ceiling Grid |  | 15d | 2011-05-23 | 2011-06-10 | MN2000 |  |  |  |  | 0d |  | Finish Carpenter [888.62 h] | 59,537.81 |  | CON | NOLAN | FINSH | INTFN | BA |  |  |
| MN2160 |  | Finish Carpentry and Millwork |  | 5d | 2011-06-22 | 2011-06-28 | MN2130 |  |  |  |  | 0d |  | Finish Carpenter [222.16 h] | 14,884.45 |  | CON | NOLAN | FINSH | INTFN | BA |  |  |
|  | Paint | **Paint** |  |  | 2011-04-26 | 2011-05-20 |  |  |  |  |  |  |  |  |  |  |  |  |  |  |  |  |  |
| MN2020 |  | Paint Building Interior |  | 15d | 2011-04-26 A | 2011-05-20 | MN2000 SS+7d |  | 15d | 2011-04-22 | 2011-05-12 | 27d |  |  |  |  | CON | NOLAN | FINSH | INTFN | BA |  |  |
|  | Conv | **Conveyor System** |  |  | 2010-09-08 | 2012-01-13 |  |  |  |  |  |  |  |  |  |  |  |  |  |  |  |  |  |
|  | SysDesEng | **System Design and Engineering** |  |  | 2010-09-08 | 2011-01-03 |  |  |  |  |  |  |  |  |  |  |  |  |  |  |  |  |  |
| MN1350 |  | System Design |  | 40d | 2010-09-08 A | 2010-11-02 A | MN1270 | 100% |  |  |  |  | start on or after 2000-01-24 | Automation Systems Engineer [148.1 h] | 11,848.32 | 12,160 | ENG | MASON | DESGN | CSDSG | CS |  |  |
| MN1530 |  | Review and Approve Design |  | 15d | 2010-11-04 A | 2010-11-24 A | MN1350 | 100% |  |  |  |  |  | Owen McGuire, Project Manager [55.54 h] | 3,610.03 | 3,770 | ENG | MASON | DESGN | CSDSG | CS |  |  |
| MN1570 |  | Prepare Drawings for Conveyors |  | 20d | 2010-11-25 A | 2010-12-24 A | MN1530 | 100% |  | 2010-11-25 | 2010-12-22 |  |  | Design Engineer [37.4 h] | 3,066.8 | 3,280 | ENG | MASON | DESGN | CNVYS | CS | DRAW |  |
| MN1610 |  | Review and Approve Drawings for Conveyors |  | 5d | 2010-12-28 A | 2011-01-03 A | MN1570 | 100% |  |  |  |  |  | Project Managers [18.51 h]; Automation Systems Engineer [22 h] | 2,685.65 | 2,450 | ENG | MASON | DESGN | CNVYS | CS | APPRV |  |
|  | FieldOps | **Field Operations** |  |  | 2011-01-05 | 2012-01-13 |  |  |  |  |  |  |  |  |  |  |  |  |  |  |  |  |  |
|  | Install | **Installation** |  |  | 2011-01-05 | 2012-01-13 |  |  |  |  |  |  |  |  |  |  |  |  |  |  |  |  |  |
| MN1620 |  | Prepare and Solicit Bids for Conveyors |  | 10d | 2011-01-05 A | 2011-01-18 A | MN1610 | 100% |  |  |  |  |  | Automation Systems Engineer [18.51 h] | 1,481.04 | 1,360 | PCH | FOLEY | PROCR | CNVYS | CS | WRITE |  |
| MN1670 |  | Review Bids for Conveyors |  | 2d | 2011-01-19 A | 2011-01-20 A | MN1620 | 100% |  |  |  |  |  | Owen McGuire, Project Manager [3.7 h] | 240.67 | 325 | PCH | FOLEY | PROCR | CNVYS | CS | BIDS |  |
| MN1720 |  | Award Contract |  | 1d | 2011-01-21 A | 2011-01-21 A | MN1670 | 100% |  |  |  |  |  |  |  |  | PCH | FOLEY | PROCR | CNVYS | CS | AWARD |  |
| MN1730 |  | Fabricate and Deliver Conveyors |  | 50d | 2011-01-24 A | 2011-04-04 A | MN1720 | 100% |  | 2011-01-24 | 2011-04-01 |  |  | Fabrication [370.26 h] | 23,696.64 | 23,696.64 | PCH | FOLEY | PROCR | CNVYS | CS | FABDE |  |
| MN2230 |  | Start Conveyor Installation | milestone | 0d | 2011-07-05 | 2011-07-05 | MN2220 |  |  |  |  | 0d |  |  |  |  | ISD | MILLS | INSTL | CNVYS | CS |  | Key MS |
| MN2240 |  | Site Preparation |  | 15d | 2011-07-05 | 2011-07-25 | MN2230 |  |  |  |  | 0d |  | Field Eng-Assistant [28.05 h] | 1,262.25 |  | ISD | MILLS | INSTL | CNVYS | CS |  |  |
| MN2250 |  | Install Conveyor 211 |  | 14d | 2011-07-26 | 2011-08-12 | MN2240, MN1730 |  |  |  |  | 0d |  | Field Eng-Senior [52.36 h] | 4,974.2 |  | ISD | MILLS | INSTL | CNVYS | CS |  |  |
| MN2260 |  | Install Conveyor 212 |  | 50d | 2011-08-15 | 2011-10-21 | MN2250 |  |  |  |  | 0d |  | Field Eng-Senior [185.13 h] | 17,587.35 |  | ISD | MILLS | INSTL | CNVYS | CS |  |  |
| MN2270 |  | Field Piping |  | 50d | 2011-10-10 | 2011-12-16 | MN2250 SS+54d |  |  |  |  | 0d |  | Field Eng-Senior [93.5 h]; Field Eng-Assistant [185.13 h] | 17,213.35 |  | ISD | MILLS | INSTL | CNVYS | CS |  |  |
| MN2280 |  | Field Wiring |  | 50d | 2011-10-10 | 2011-12-16 | MN2250 SS+54d |  |  |  |  | 0d |  | Field Eng-Assistant [185.13 h]; Field Engineer [185.13 h] | 22,585.86 |  | ISD | MILLS | INSTL | CNVYS | CS |  |  |
| MN2290 |  | Install Conveyor 213 |  | 10d | 2011-10-24 | 2011-11-04 | MN2260 |  |  |  |  | 0d |  | Field Eng-Senior [74.05 h] | 7,034.94 |  | ISD | MILLS | INSTL | CNVYS | CS |  |  |
| MN2300 |  | Install Conveyor 214 |  | 30d | 2011-11-07 | 2011-12-16 | MN2290 |  |  |  |  | 0d |  | Field Eng-Senior [111.08 h] | 10,552.41 |  | ISD | MILLS | INSTL | CNVYS | CS |  |  |
| MN2310 |  | Field Painting |  | 20d | 2011-11-07 | 2011-12-02 | MN2250 SS+74d |  |  |  |  | 10d |  | Field Engineer [74.05 h] | 5,702 |  | ISD | MILLS | INSTL | CNVYS | CS |  |  |
| MN2330 |  | Conveyor System Complete | milestone | 0d | 2012-01-13 | 2012-01-13 | MN1960, MN2320 |  |  |  |  | 0d |  |  |  |  | ISD | MILLS | INSTL | CNVYS | CS |  | Key MS |

| ID | WBS | Activity | Duration | Start | Finish | Predecessors | Remaining | Planned start | Planned finish | Total float | Resources | Cost | Actual cost | Department | Responsibility | Phase | Item | Project ID |
| --- | --- | --- | --- | --- | --- | --- | --- | --- | --- | --- | --- | --- | --- | --- | --- | --- | --- | --- |
|  | OnsiteTest | **Onsite Testing** |  | 2011-12-19 | 2012-01-13 |  |  |  |  |  |  |  |  |  |  |  |  |  |
| MN2320 |  | Start-Up & Debug System | 20d | 2011-12-19 | 2012-01-13 | MN2270, MN2300, MN2310, MN2280 |  |  |  | 0d | Automation Systems Engineer [22.22 h]; Field Eng-Senior [37.03 h] | 5,294.72 |  | ISD | MILLS | INSTL | CNVYS | CS |
|  | Train | **Training** |  | 2011-04-07 | 2011-09-02 |  |  |  |  |  |  |  |  |  |  |  |  |  |
|  | OpsManual | **Operation Manuals** |  | 2011-04-07 | 2011-09-02 |  |  |  |  |  |  |  |  |  |  |  |  |  |
| MN1960 |  | Operation Manuals | 90d | 2011-04-07 A | 2011-09-02 | MN1730 | 90d | 2011-04-05 | 2011-08-08 | 95d | Owen McGuire, Project Manager [249.93 h] | 16,245.16 | 3,250 | ISD | EVANS | INSTL | CNVYS | CS |

## Activity codes

| Code | Value | Meaning |
| --- | --- | --- |
| Department | CON | Construction Department |
| Department | ENG | Engineering Department |
| Department | ISD | Information Systems Department |
| Department | PCH | Purchasing Department |
| Item | ASDSG | Automated System Design |
| Item | BADSG | Building Design |
| Item | BRICK | Brick |
| Item | CNVYS | Conveyors |
| Item | CSDSG | Conveyor System Design |
| Item | EXTFN | Exterior Finishes |
| Item | FLOOR | Flooring |
| Item | FOUND | Foundation |
| Item | HRDWR | Hardware |
| Item | INTFN | Interior Finishes |
| Item | MECHE | Mechanical/Electrical Systems |
| Item | PUMP | Heat Pump |
| Item | SFTWR | Software |
| Item | STRUC | Structure |
| Item | SYSTC | System Controller |
| Item | TEMPC | Temperature Control Equipment |
| Key Milestones | Key MS | Key Milestones |
| Phase | CLOSE | Close-In Phase |
| Phase | DESGN | Design and Engineering Phase |
| Phase | FINSH | Finishes and Closeout Phase |
| Phase | FOUND | Foundation Construction Phase |
| Phase | INSTL | Installation Phase |
| Phase | PROCR | Procurement Phase |
| Phase | ROUGH | Rough-In Phase |
| Phase | STRUC | Structural Phase |
| Phase | SYS1 | System Integration Phase I |
| Phase | SYS2 | System Integration Phase II |
| Project ID | AS | Robotics Automation System |
| Project ID | BA | Office Building Addition |
| Project ID | CS | Conveyor System |
| Responsibility | ACME | Acme Motors |
| Responsibility | EVANS | Tim Evans |
| Responsibility | FOLEY | Meg Foley |
| Responsibility | HARIS | Linda Haris |
| Responsibility | MASON | Andy Mason |
| Responsibility | MILLS | Tom Mills |
| Responsibility | NOLAN | Joe Nolan |
| Responsibility | VENDR | Vendor |
| Step | APPRV | Review and Approve Shop Drawings/Samples |
| Step | AWARD | Award Contract |
| Step | BIDS | Review Bids |
| Step | DRAW | Shop Drawings/Samples |
| Step | FABDE | Fabricate and Deliver |
| Step | WRITE | Prepare and Solicit Bids |
